# Wdrożenie_systemu_CRM

Schedule from MS Project, 2026-01-28 to 2026-04-24, costs in zł.

## Calendars

- CRM – Project Calendar: Mon-Fri 08:00-12:00, 13:00-17:00; Sat 09:00-13:00; Sun off. Exceptions (off unless hours are given): 2026-04-06 (Poniedziałek Wielkanocny, recurring).

## Resources

| Resource | Group | Unit | Rate |
| --- | --- | --- | --- |
| Kierownik projektu CRM | Zarząd |  | 120 |
| Analityk biznesowy | Analiza biznesowa |  | 90 |
| Administrator IT / CRM | Dział IT |  | 80 |
| Pracownik administracyjny | Pracownik administracyjny |  | 65 |
| Informatyk | Dział IT |  | 90 |
| Dostawca systemu CRM | Firma zewnętrzna |  |  |
| Firma szkoleniowa CRM | Firma zewnętrzna |  |  |
| Materiały szkoleniowe |  | Pakiet | 50 |
| Licencje użytkowników CRM |  | Licencja | 120 |
| Użytkownik końcowy CRM | Użytkownicy systemu |  |  |
| Zespół sprzedaży | Dział sprzedaży |  |  |

## Schedule

| ID | WBS | Task | Type | Duration | Start | Finish | Predecessors | Total slack | Resources | Work | Cost |
| --- | --- | --- | --- | --- | --- | --- | --- | --- | --- | --- | --- |
| 1 | 1 | **Wdrożenie systemu CRM** |  | 68d | 2026-01-28 | 2026-04-24 |  | 0d |  | 536h | 37,410 |
| 2 | 1.1 | **Analiza przedwdrążeniowa** |  | 15d | 2026-01-28 | 2026-02-16 |  | 0d |  | 200h | 10,800 |
| 3 | 1.1.1 | Zbieranie wymagań od użytkowników | manual | 2w | 2026-01-28 | 2026-02-09 |  |  | Analityk biznesowy; Użytkownik końcowy CRM | 160h | 7,200 |
| 4 | 1.1.2 | Analiza wymagań | manual | 1w | 2026-02-10 | 2026-02-16 | 3 |  | Analityk biznesowy | 40h | 3,600 |
| 5 | 1.1.3 | Akceptacja dokumentu wymagań | milestone | 0d | 2026-02-16 | 2026-02-16 | 4 | 0d | Kierownik projektu CRM |  |  |
| 6 | 1.2 | **Wybór dostawcy systemu CRM** |  | 10d | 2026-02-16 | 2026-02-27 |  | 0d |  | 80h | 9,600 |
| 7 | 1.2.1 | Przygotowanie zapytań ofertowych |  | 1w | 2026-02-16 | 2026-02-21 | 5 | 0d | Kierownik projektu CRM; Pracownik administracyjny | 40h | 4,800 |
| 8 | 1.2.2 | Analiza ofert CRM |  | 1w | 2026-02-21 | 2026-02-27 | 7 | 0d | Informatyk; Kierownik projektu CRM | 40h | 4,800 |
| 9 | 1.2.3 | Podpisanie umowy z dostawcą | milestone | 0d | 2026-02-27 | 2026-02-27 | 8 | 0d | Dostawca systemu CRM; Kierownik projektu CRM |  |  |
| 10 | 1.3 | **Konfiguracja i wdrożenie CRM** |  | 28d | 2026-02-27 | 2026-04-04 |  | 0d |  | 172h | 13,760 |
| 11 | 1.3.1 | Konfiguracja modułu sprzedaży |  | 2w | 2026-02-27 | 2026-03-12 | 9 | 0d | Administrator IT / CRM; Dostawca systemu CRM [0.1%]; Informatyk | 80h | 6,400 |
| 12 | 1.3.2 | Konfiguracja modułu kontaktów |  | 1.3w | 2026-02-27 | 2026-04-04 | 11SS | 0d | Administrator IT / CRM; Informatyk | 52h | 4,160 |
| 13 | 1.3.3 | Konfiguracja raportów i uprawnień |  | 1w | 2026-03-30 | 2026-04-04 | 12FF | 0d | Administrator IT / CRM | 40h | 3,200 |
| 14 | 1.4 | **Migracja danych i testy** |  | 15d | 2026-04-04 | 2026-04-24 |  | 0d |  | 80h | 3,200 |
| 15 | 1.4.1 | Przygotowanie danych klientów | milestone | 0w | 2026-04-04 | 2026-04-04 | 13 | 0d | Informatyk; Pracownik administracyjny |  |  |
| 16 | 1.4.2 | Migracja danych do CRM |  | 14ed | 2026-04-04 | 2026-04-18 | 15 | 5.38d | Dostawca systemu CRM [0.1%]; Informatyk |  |  |
| 17 | 1.4.3 | Testy akceptacyjne CRM |  | 1w | 2026-04-20 | 2026-04-24 | 16 | 0d | Administrator IT / CRM; Użytkownik końcowy CRM | 80h | 3,200 |
| 18 | 1.5 | **Uruchomienie i zakończenie projektu** |  | 0.5d | 2026-03-26 | 2026-03-27 |  | 0d |  | 4h | 50 |
| 19 | 1.5.1 | Szkolenia użytkowników CRM | manual | 4h | 2026-03-26 | 2026-03-26 | 17SF |  | Firma szkoleniowa CRM [0.1%]; Materiały szkoleniowe [1 Pakiet]; Użytkownik końcowy CRM | 4h | 50 |
| 20 | 1.5.2 | Start produkcyjny CRM | milestone, manual | 0d | 2026-03-27 | 2026-03-27 | 19 |  | Administrator IT / CRM; Kierownik projektu CRM |  |  |
| 21 | 1.5.3 | Zakończenie projektu CRM | milestone, manual | 0d | 2026-03-27 | 2026-03-27 | 20 |  | Kierownik projektu CRM |  |  |
